Schedule from MS Project, 2017-06-08 to 2017-07-28, A marks actual dates.

## Calendars

- 标准: Mon-Fri 08:00-12:00, 13:00-17:00; Sat-Sun off.

## Resources

| Resource | Group |
| --- | --- |
| 付金磊 | 本正 |
| 查唐群 | 本正 |
| 陈钰涵 | 本正 |
| 葛天伦 | 本正 |
| 缪轩阳 | 本正 |
| 强露珠 | 本正 |
| 辛菲菲 | 本正 |
| 李哲 | 本正 |
| 蒋卓伟 | 本正 |

## Schedule

| ID | WBS | Task | Type | Duration | Start | Finish | Predecessors | Complete | Remaining | Baseline start | Baseline finish | Baseline duration | Baseline 1 start | Constraint | Resources | Work | Actual work | 责任人员 |
| --- | --- | --- | --- | --- | --- | --- | --- | --- | --- | --- | --- | --- | --- | --- | --- | --- | --- | --- |
| 1 | 1 | **小易CRM系统** |  | 37d | 2017-06-08 08:00 A | 2017-07-28 17:00 |  | 11% | 33.01d | 2017-06-08 08:00 | 2017-07-28 17:00 | 0d? | 2017-06-08 08:00 |  |  | 1768h | 131.6h |  |
| 2 | 1.1 | **设计（静态页面）** |  | 18d | 2017-06-08 08:00 A | 2017-07-03 17:00 |  | 3% | 17.53d | 2017-06-08 08:00 | 2017-07-03 17:00 | 0d? | 2017-06-08 08:00 |  | 查唐群; 陈钰涵; 付金磊 | 888h | 12h | 查、陈、付 |
| 3 | 1.1.1 | 静态页面设计 | manual | 18d | 2017-06-08 08:00 A | 2017-07-03 17:00 |  |  | 18d | 2017-06-08 08:00 | 2017-07-03 17:00 | 0d |  |  | 查唐群; 陈钰涵; 付金磊 | 432h |  | 查、陈、付 |
| 4 | 1.1.2 | 基本风格定稿 | manual | 0.5d | 2017-06-14 08:00 A | 2017-06-14 12:00 A |  | 100% |  | 2017-06-14 08:00 | 2017-06-14 17:00 | 0d? | 2017-06-14 08:00 | start no earlier than 2017-06-14 08:00 | 查唐群; 陈钰涵; 李哲 | 12h | 12h | 查、陈、李 |
| 5 | 1.1.3 | 中间成果物讨论 | manual | 0.5d | 2017-06-22 08:00 | 2017-06-22 12:00 |  |  |  | 2017-06-22 08:00 | 2017-06-22 17:00 | 0d? | 2017-06-22 08:00 | start no earlier than 2017-06-22 08:00 | 查唐群; 陈钰涵; 李哲 | 12h |  | 查、陈、李 |
| 6 | 1.2 | **技术设计（接口&数据库）** |  | 6d | 2017-06-08 08:00 A | 2017-06-15 17:00 |  | 99% | 0.03d | 2017-06-08 08:00 | 2017-06-15 17:00 | 0d? | 2017-06-08 08:00 |  | 葛天伦; 缪轩阳 | 168h | 119.6h | 葛、缪 |
| 7 | 1.2.1 | 数据库设计 | manual | 2.5d | 2017-06-08 08:00 A | 2017-06-10 12:00 A |  | 100% |  | 2017-06-08 08:00 | 2017-06-10 17:00 | 0d |  |  | 葛天伦; 缪轩阳 | 40h | 40h | 葛、缪 |
| 8 | 1.2.2 | 数据库表讨论 | manual | 0.5d | 2017-06-12 08:00 A | 2017-06-12 12:00 A |  | 100% |  | 2017-06-12 08:00 | 2017-06-12 17:00 | 0d? | 2017-06-12 08:00 | start no earlier than 2017-06-12 08:00 | 葛天伦; 李哲; 强露珠 | 12h | 12h | 李，葛，强 |
| 9 | 1.2.3 | 接口设计 | manual | 2.5d | 2017-06-13 08:00 A | 2017-06-15 12:00 |  | 99% | 0.03d | 2017-06-13 08:00 | 2017-06-15 17:00 | 0d |  |  | 葛天伦; 缪轩阳 | 40h | 39.6h | 葛、缪 |
| 10 | 1.2.4 | 接口讨论 | manual | 0.5d | 2017-06-14 08:00 A | 2017-06-14 12:00 A |  | 100% |  | 2017-06-13 08:00 | 2017-06-13 17:00 | 0d? | 2017-06-13 08:00 | start no earlier than 2017-06-13 08:00 | 葛天伦; 李哲; 缪轩阳; 强露珠 | 12h | 12h | 李，葛，强 |
| 11 | 1.3 | 后端开发 | manual | 16d | 2017-06-14 08:00 | 2017-07-05 17:00 |  |  |  | 2017-06-14 08:00 | 2017-07-05 17:00 | 0d? | 2017-06-14 08:00 | finish no earlier than 2017-07-05 17:00 | 葛天伦; 缪轩阳 | 256h |  | 葛、缪 |
| 12 | 1.4 | 前后端集成 | manual | 10d | 2017-07-06 08:00 | 2017-07-19 17:00 | 11 |  |  | 2017-07-06 08:00 | 2017-07-19 17:00 | 0d? | 2017-07-06 08:00 | start no earlier than 2017-07-06 08:00 | 查唐群; 陈钰涵; 付金磊 | 240h |  | 付、查、陈 |
| 13 | 1.5 | 测试 | manual | 9d | 2017-07-18 08:00 | 2017-07-28 17:00 |  |  |  | 2017-07-18 08:00 | 2017-07-28 17:00 | 0d? | 2017-07-18 08:00 | start no earlier than 2017-07-18 08:00 | 查唐群; 强露珠; 辛菲菲 | 216h |  | 强、查、辛 |
